Schedule from OmniPlan, 2017-09-07 to 2020-08-15.
Project start 2017-09-06

## Resources

| Resource | Group |
| --- | --- |
| 资源 1 | staff |
| 设备 1 | equipment |
| 素材 1 | material |
| 群组 1 | group |
| YF | staff |
| KD | staff |
| TK | staff |
| HMD | equipment |
| Gesture sensor | equipment |
| Microscope | equipment |
| User | staff |

## Schedule

| ID | WBS | Task | Type | Start | Predecessors | Constraint | Resources | Work |
| --- | --- | --- | --- | --- | --- | --- | --- | --- |
| 1 | 1 | **Organizational** |  |  |  |  |  |  |
| 2 | 1.1 | Project planning |  | 2017-09-07 |  | start no earlier than 2017-09-07 | YF | 16h |
| 3 | 1.2 | Topic discussion |  | 2017-09-08 |  |  | YF; KD; TK | 24h |
| 4 | 1.3 | KD -> IPR |  | 2017-09-12 |  | start no earlier than 2017-09-12 | KD; TK | 8h |
| 5 | 1.4 | TK -> CZ |  | 2017-09-13 | 4 | start no earlier than 2017-09-13 | TK; KD | 16h |
| 6 | 1.5 | Exposé writing |  | 2017-09-11 |  | start no earlier than 2017-09-11 | YF | 80h |
| 7 | 1.6 | YF+KD+TK meeting |  |  | 6 | start no earlier than 2017-10-10 | TK; KD; YF | 24h |
| 8 | 1.7 | Register PhD @ KIT | milestone | 2017-10-31 | 6 | start no earlier than 2017-10-31 | TK |  |
| 9 | 1.8 | Updates @ TK (IPR) | milestone | 2017-10-13 |  | start no earlier than 2017-10-13 | TK |  |
| 10 | 1.9 | Updates @ KD (CZ) | milestone | 2017-10-20 |  | start no earlier than 2017-10-20 | KD |  |
| 11 | 1.10 | befriending Hololens? | milestone | 2017-10-06 |  | start no earlier than 2017-10-06 | YF |  |
| 12 | 1.11 | befriending CZ-Meditec | milestone | 2017-10-12 |  | start no earlier than 2017-10-12 | YF; User |  |
| 13 | 1.12 | befriending hospital | milestone | 2017-10-18 |  | start no earlier than 2017-10-18 | YF; User |  |
| 14 | 2 | **Research** |  |  |  | finish no later than 2018-04-30 |  |  |
| 15 | 2.1 | Literature |  |  | 18FF | start no earlier than 2017-09-10 | YF | 1200h |
| 16 | 2.2 | Instrument observation |  |  |  | start no earlier than 2017-10-24 | User | 80h |
| 17 | 2.3 | OR use case observation |  |  | 16 | start no earlier than 2017-11-13 | User | 16h |
| 18 | 2.4 | user interview |  |  | 17 | start no earlier than 2017-11-28 | User | 16h |
| 19 | 2.5 | check @ TK | milestone | 2018-03-13 | 15SS | start no earlier than 2018-03-13 | TK |  |
| 20 | 3 | **Implementation + Development** |  |  |  | start no earlier than 2017-10-23 |  |  |
| 21 | 3.1 | HMI concept |  |  |  | start no earlier than 2018-03-19 | YF | 120h |
| 22 | 3.2 | Workflow design |  | 2018-04-20 | 21 |  | YF | 80h |
| 23 | 3.3 | Tool making |  | 2018-05-04 | 22 | start no earlier than 2017-10-30 | HMD; Gesture sensor; Microscope | 1440h |
| 24 | 3.4 | Framework |  | 2018-05-14 | 22 | start no earlier than 2018-01-16 | YF | 240h |
| 25 | 3.5 | access to HMD | milestone | 2018-06-19 |  | start no earlier than 2018-06-19 | HMD |  |
| 26 | 3.6 | Head tracking? |  |  | 24, 25 | start no earlier than 2018-07-03 | HMD | 8h |
| 27 | 3.7 | HMD-Visualization |  | 2018-06-26 | 24, 23, 25 |  | HMD | 80h |
| 28 | 3.8 | Sensors & hardware |  | 2018-06-26 | 24, 23 | start no earlier than 2018-01-30 | Gesture sensor | 80h |
| 29 | 3.9 | Gesture Input |  | 2018-07-11 | 28, 27 |  | Gesture sensor | 40h |
| 30 | 3.10 | Gesture interpretation |  | 2018-07-18 | 29 |  | Gesture sensor | 240h |
| 31 | 3.11 | access to microscope | milestone | 2018-10-18 |  | start no earlier than 2018-10-18 | Microscope |  |
| 32 | 3.12 | Basic movements |  | 2018-01-22 | 31 |  | Microscope | 40h |
| 33 | 3.13 | Robot motion control |  | 2018-01-29 | 32 |  | Microscope | 80h |
| 34 | 3.14 | Gesture -> Motion |  |  | 33, 30 | start no earlier than 2018-11-30 | Gesture sensor; Microscope; HMD | 1200h |
| 35 | 3.15 | general implementation |  | 2018-10-04 | 34 | finish no later than 2019-09-25 | HMD; Gesture sensor; Microscope; YF | 4800h |
| 36 | 3.16 | Integration |  |  | 35SS | start no earlier than 2019-05-13 | YF; Gesture sensor; Microscope; HMD | 4800h |

Notes:
- 29: using leap motion?
- 30: based on joint state?
- 31: (simulation/real) / sitting at meditec? / ask them if there is a simulation
- 32: p2p movement
- 33: basic planning, rrt / collision avoidance
- 34: coupling

| ID | WBS | Task | Type | Start | Predecessors | Constraint | Resources | Work |
| --- | --- | --- | --- | --- | --- | --- | --- | --- |
| 37 | 4 | **Assesment** |  |  |  | start no earlier than 2019-03-01 |  |  |
| 38 | 4.1 | Test & adjust |  |  | 36SS | start no earlier than 2019-06-24 | YF; KD | 1600h |
| 39 | 4.2 | Define validation |  |  | 38SS | start no earlier than 2019-10-21 | YF; KD; TK | 360h |
| 40 | 4.3 | TK happy | milestone | 2019-11-07 | 39SS | start no earlier than 2019-11-07 | TK |  |
| 41 | 4.4 | Design experiments |  | 2019-11-07 | 40 |  | YF; KD | 160h |
| 42 | 4.5 | Execute experiments |  | 2019-11-21 | 41 |  | YF; HMD; Microscope; Gesture sensor | 320h |
| 43 | 4.6 | Performance analysis |  | 2019-12-05 | 42 | finish no later than 2020-04-29 | YF | 80h |
| 44 | 4.7 | Validation |  | 2019-12-25 | 43SS | start no earlier than 2019-12-25 | YF; KD | 320h |
| 45 | 4.8 | Assesment @ YF |  | 2020-01-22 | 44 | finish no later than 2020-02-29 | YF | 160h |
| 46 | 4.9 | YF happy | milestone | 2020-01-31 | 45SS | start no earlier than 2020-01-31 | YF |  |
| 47 | 4.10 | Assesment @ CZ-CRT |  | 2020-02-14 | 46 | start no earlier than 2020-02-14 | KD | 80h |
| 48 | 4.11 | CZ-CRT happy | milestone | 2020-02-24 | 47SS | start no earlier than 2020-02-24 | KD |  |
| 49 | 4.12 | Assesment @ CZ-Meditec |  | 2019-11-29 | 48 | finish no later than 2020-04-29 | User | 40h |
| 50 | 4.13 | Assesment @ hospital |  | 2019-12-06 | 49 | finish no later than 2020-04-29 | User | 40h |
| 51 | 4.14 | Hospital happy | milestone | 2020-03-05 | 50SS | start no earlier than 2020-03-05 | User |  |
| 52 | 4.15 | Assesment @ IPR |  | 2020-01-31 | 46 | start no earlier than 2020-01-31 | TK | 80h |
| 53 | 4.16 | IPR happy | milestone | 2020-02-12 | 52SS | start no earlier than 2020-02-12 | TK |  |
| 54 | 4.17 | Performance analysis |  | 2020-03-05 | 53, 51 | finish no later than 2020-05-01 | YF | 80h |
| 55 | 5 | **PhD Thesis** |  |  |  | finish no later than 2020-08-30 |  |  |
| 56 | 5.1 | Introduction |  | 2017-10-19 |  | start no earlier than 2017-09-06 | YF | 80h |
| 57 | 5.2 | State-of-the-Art (draft) |  |  |  | start no earlier than 2017-09-26 | YF | 40h |
| 58 | 5.3 | State-of-the-Art |  | 2017-11-02 | 57 |  | YF | 40h |
| 59 | 5.4 | Background |  | 2019-04-11 | 62SS | start no earlier than 2018-03-14 | YF | 160h |
| 60 | 5.5 | Use Case (draft) |  | 2017-11-09 |  | start no earlier than 2017-09-06 | YF | 160h |
| 61 | 5.6 | Use Case |  | 2018-07-09 | 60 | start no earlier than 2017-10-04 | YF | 160h |
| 62 | 5.7 | Analysis & Methodology |  |  | 14FF, 21SS, 61SS | start no earlier than 2018-09-20 | YF | 1280h |
| 63 | 5.8 | Implementation |  |  | 24SS | start no earlier than 2019-04-11 | YF; Microscope; Gesture sensor; HMD | 6400h |
| 64 | 5.9 | Assesment / Evaluation / Validation |  | 2019-08-26 | 37FF, 37SS | start no earlier than 2019-08-26 | YF | 1600h |
| 65 | 5.10 | Conclusion + Outlook |  | 2020-06-01 | 64 | finish no later than 2020-06-23 | YF | 80h |
| 66 | 5.11 | YF review + tweak |  | 2020-06-18 | 65 | finish no later than 2020-06-25 | YF | 40h |
| 67 | 5.12 | YF happy | milestone | 2020-06-30 | 66 | finish no later than 2020-06-30 | YF |  |
| 68 | 5.13 | supervisor review |  |  | 70FF, 69FF, 67 | start no earlier than 2020-06-26 | KD; TK | 480h |
| 69 | 5.14 | KD happy | milestone | 2020-07-30 |  | finish no later than 2020-07-30 | KD |  |
| 70 | 5.15 | TK happy | milestone | 2020-08-04 |  | finish no later than 2020-08-04 | TK |  |
| 71 | 5.16 | Submission | milestone | 2020-08-15 | 68 | start no earlier than 2020-08-15 | YF |  |

Notes:
- 39: evaluation criteria
- 56: problem statement / motivation / layout
- 58: current technologies / research frontline
- 59: theoretical content to be refered to
- 61: or observation / problem analysis
- 62: or analyze problem here?
- 63: scene setup / design / hardware / software
- 64: simulation / experiments

| ID | WBS | Task | Start | Predecessors | Constraint | Resources | Work |
| --- | --- | --- | --- | --- | --- | --- | --- |
| 72 | 6 | **Publication** |  |  | finish no later than 2020-08-31 |  |  |
| 73 | 6.1 | AR System concept in OR |  |  | start no earlier than 2017-09-11 | YF | 360h |
| 74 | 6.2 | ? Robot Motion and Interaction with soft tissue | 2017-09-25 |  | start no earlier than 2017-09-06 | YF | 8h |
| 75 | 6.3 | ? visibility-based camera positioning | 2018-05-03 | 33 |  | YF | 16h |
| 76 | 6.4 | ? Learning surgeon behavior -> robot behavior | 2018-06-25 | 33SS | start no earlier than 2017-09-18 | YF | 80h |
| 77 | 6.5 | Gesture interpretation | 2018-09-20 | 30SS |  | Gesture sensor | 80h |
| 78 | 6.6 | ? Gestures interpretation adjustments regarding learning subsequent correction | 2018-09-20 | 30SS |  | Gesture sensor | 80h |
| 79 | 6.7 | ? 3D-based scene observation and perspective optimization | 2018-09-20 | 30SS |  | Gesture sensor | 80h |
| 80 | 6.8 | Standardized soft constrain in robot motion | 2018-09-20 | 30SS |  | Gesture sensor | 80h |
| 81 | 6.9 | Gesture-based Robot Motion control | 2018-08-29 | 34SS |  | YF | 8h |
| 82 | 6.10 | SysCon | 2017-10-05 | 73SS | start no earlier than 2017-09-25 | YF | 88h |
| 83 | 6.11 | IROS 2018? | 2018-02-28 |  | start no earlier than 2017-09-07 |  | 8h |
| 84 | 6.12 | BIOROB 2018? | 2018-05-14 |  | start no earlier than 2017-09-06 | YF | 8h |
| 85 | 6.13 | ICRA 2019? | 2018-09-07 |  | start no earlier than 2017-09-06 | YF | 8h |
| 86 | 6.14 | IROS 2019? | 2019-02-28 |  | start no earlier than 2017-09-07 |  | 8h |
| 87 | 6.15 | ICRA 2020? | 2019-08-23 |  | start no earlier than 2017-09-06 | YF | 8h |

Notes:
- 74: (threads, vessel, brain, other organ) / interesting, but not our field
- 75: points of interest / 3D scene (incesion) and visibility
- 76: (avoid collision / vision blocking)
- 78: estimating wished view of surgeon
- 79: estimating wished view of surgeon
